# Senior Project Plan_7-19

Schedule from MS Project, 2013-05-13 to 2013-10-25, scheduled back from the finish, costs in $, A marks actual dates.

## Calendars

- Standard: Mon-Fri 08:00-12:00, 13:00-17:00; Sat-Sun off.

## Resources

| Resource | Rate |
| --- | --- |
| Lead Programmer | 14.42 |
| UI Programmer | 14.42 |
| Programmer 1 | 14.42 |
| Programmer 2 | 14.42 |
| programmer 3 | 14.42 |
| programmer 4 | 14.42 |
| Artist | 14.42 |

## Schedule

| ID | WBS | Task | Duration | Start | Finish | Predecessors | Complete | Remaining | Total slack | Free slack | Constraint | Resources | Work | Actual work | Cost | Actual cost |
| --- | --- | --- | --- | --- | --- | --- | --- | --- | --- | --- | --- | --- | --- | --- | --- | --- |
| 1 | 1 | **Senior Project Demo** | 120d | 2013-05-13 08:00 A | 2013-10-25 17:00 |  | 31% | 82.86d | 0d |  | as late as possible |  | 5732h | 1728h | 82,673.08 | 24,923.08 |
| 2 | 1.1 | **Design** | 35d | 2013-05-13 08:00 A | 2013-06-28 17:00 |  | 86% | 5d | 0d |  | as late as possible |  | 1680h | 1440h | 24,230.77 | 20,769.23 |
| 3 | 1.1.1 | Create GDD | 15d | 2013-05-13 08:00 A | 2013-05-31 17:00 A |  | 100% |  |  |  | as late as possible | Lead Programmer; Programmer 1; Programmer 2; programmer 3; programmer 4; UI Programmer | 720h | 720h | 10,384.62 | 10,384.62 |
| 4 | 1.1.2 | Create TDD | 20d | 2013-06-03 08:00 A | 2013-06-28 17:00 | 3 | 75% | 5d | 0d |  | as late as possible | Lead Programmer; Programmer 1; Programmer 2; programmer 3; programmer 4; UI Programmer | 960h | 720h | 13,846.16 | 10,384.62 |
| 5 | 1.2 | Learn AndEngine | 35d | 2013-05-13 08:00 A | 2013-06-28 17:00 |  | 65% | 12.25d | 0d |  | start no later than 2013-05-13 08:00 |  |  |  |  |  |
| 6 | 1.3 | **UI** | 26.88d | 2013-07-03 09:00 A | 2013-08-08 17:00 |  | 11% | 24.05d | 0d |  | as late as possible |  | 228h | 24h | 3,288.46 | 346.15 |
| 7 | 1.3.1 | **Screens** | 26.88d | 2013-07-03 09:00 A | 2013-08-08 17:00 |  | 11% | 24.05d | 0d |  | as late as possible |  | 228h | 24h | 3,288.46 | 346.15 |
| 8 | 1.3.1.1 | **Start** | 26.88d | 2013-07-03 09:00 A | 2013-08-08 17:00 |  | 86% | 3.84d | 0d |  | as late as possible |  | 14h | 12h | 201.92 | 173.08 |
| 9 | 1.3.1.1.1 | Start Button | 0.25d | 2013-07-03 09:00 A | 2013-07-03 11:00 A | 5, 4 | 100% |  |  |  | as late as possible | UI Programmer | 2h | 2h | 28.85 | 28.85 |
| 10 | 1.3.1.1.2 | Exit Button | 0.25d | 2013-07-03 11:00 A | 2013-07-03 14:00 A | 9 | 100% |  |  |  | as late as possible | UI Programmer | 2h | 2h | 28.85 | 28.85 |
| 11 | 1.3.1.1.3 | Mute Button | 0.25d | 2013-08-08 15:00 | 2013-08-08 17:00 | 10 |  |  | 26.12d | 0d | as late as possible | UI Programmer | 2h |  | 28.85 |  |
| 12 | 1.3.1.1.4 | Background/Title Image | 1d | 2013-07-03 15:00 A | 2013-08-08 17:00 A | 11 | 100% |  |  |  | as late as possible | UI Programmer | 8h | 8h | 115.38 | 115.38 |
| 13 | 1.3.1.2 | **Character Selection** | 1.5d | 2013-07-03 10:00 A | 2013-07-04 15:00 A |  | 100% |  |  |  | as late as possible |  | 12h | 12h | 173.08 | 173.08 |
| 14 | 1.3.1.2.1 | Create Class Tabs | 1d | 2013-07-03 10:00 A | 2013-07-04 10:00 A | 12 | 100% |  |  |  | as late as possible | UI Programmer | 8h | 8h | 115.38 | 115.38 |
| 15 | 1.3.1.2.2 | Create Class Info Pane | 0.25d | 2013-07-04 10:00 A | 2013-07-04 12:00 A | 14 | 100% |  |  |  | as late as possible | UI Programmer | 2h | 2h | 28.85 | 28.85 |
| 16 | 1.3.1.2.3 | Create Start Button | 0.25d | 2013-07-04 13:00 A | 2013-07-04 15:00 A | 15 | 100% |  |  |  | as late as possible | UI Programmer | 2h | 2h | 28.85 | 28.85 |
| 17 | 1.3.1.3 | **GamePlay** | 18.25d | 2013-07-03 16:00 | 2013-07-30 09:00 |  |  |  | -0.88d | 0d | as late as possible |  | 146h |  | 2,105.77 |  |
| 18 | 1.3.1.3.1 | **HUD** | 5.25d | 2013-07-03 16:00 | 2013-07-11 09:00 |  |  |  | -0.88d | 0d | as late as possible |  | 42h |  | 605.77 |  |
| 19 | 1.3.1.3.1.1 | Create Character Portrait | 1d | 2013-07-03 16:00 | 2013-07-04 16:00 | 13 |  |  | -0.88d | 0d |  | UI Programmer | 8h |  | 115.38 |  |
| 20 | 1.3.1.3.1.2 | Create Joystick | 1d | 2013-07-04 16:00 | 2013-07-05 16:00 | 13, 19 |  |  | -0.88d | 0d | as late as possible | UI Programmer | 8h |  | 115.38 |  |
| 21 | 1.3.1.3.1.3 | Create Inventory Button | 1.25d | 2013-07-05 16:00 | 2013-07-09 09:00 | 13, 20 |  |  | -0.88d | 0d | as late as possible | UI Programmer | 10h |  | 144.23 |  |
| 22 | 1.3.1.3.1.4 | Create Map Button | 1d | 2013-07-09 09:00 | 2013-07-10 09:00 | 13, 21 |  |  | -0.88d | 0d | as late as possible | UI Programmer | 8h |  | 115.38 |  |
| 23 | 1.3.1.3.1.5 | Create Pause Popup | 1d | 2013-07-10 09:00 | 2013-07-11 09:00 | 13, 22 |  |  | -0.88d | 0d | as late as possible | UI Programmer | 8h |  | 115.38 |  |
| 24 | 1.3.1.3.2 | **Inventory** | 13d | 2013-07-11 09:00 | 2013-07-30 09:00 |  |  |  | -0.88d | 0d | as late as possible |  | 104h |  | 1,500 |  |
| 25 | 1.3.1.3.2.1 | Create Player Stats | 1d | 2013-07-11 09:00 | 2013-07-12 09:00 | 13, 18 |  |  | -0.88d | 0d | as late as possible | UI Programmer | 8h |  | 115.38 |  |
| 26 | 1.3.1.3.2.2 | Create Player Equipped Items | 3d | 2013-07-12 09:00 | 2013-07-17 09:00 | 13, 25, 18 |  |  | -0.88d | 0d | as late as possible | UI Programmer | 24h |  | 346.15 |  |
| 27 | 1.3.1.3.2.3 | Create Reserve Inventory | 4d | 2013-07-17 09:00 | 2013-07-23 09:00 | 13, 18, 26 |  |  | -0.88d | 0d | as late as possible | UI Programmer | 32h |  | 461.54 |  |
| 28 | 1.3.1.3.2.4 | Create Store | 4d | 2013-07-23 09:00 | 2013-07-29 09:00 | 13, 18, 27 |  |  | -0.88d | 0d | as late as possible | UI Programmer | 32h |  | 461.54 |  |
| 29 | 1.3.1.3.2.5 | Create Character Tabs | 0.75d | 2013-07-29 09:00 | 2013-07-29 16:00 | 13, 18, 28 |  |  | -0.88d | 0d | as late as possible | UI Programmer | 6h |  | 86.54 |  |
| 30 | 1.3.1.3.2.6 | Create Close Button | 0.25d | 2013-07-29 16:00 | 2013-07-30 09:00 | 13, 18, 29 |  |  | -0.88d | 0d | as late as possible | UI Programmer | 2h |  | 28.85 |  |

| ID | WBS | Task | Duration | Start | Finish | Predecessors | Complete | Remaining | Total slack | Free slack | Constraint | Resources | Work | Actual work | Cost | Actual cost |
| --- | --- | --- | --- | --- | --- | --- | --- | --- | --- | --- | --- | --- | --- | --- | --- | --- |
| 31 | 1.3.1.4 | **Battle** | 7d | 2013-07-30 09:00 | 2013-08-08 09:00 |  |  |  | -0.88d | 0d | as late as possible |  | 56h |  | 807.69 |  |
| 32 | 1.3.1.4.1 | Create Enemy Positions' | 3d | 2013-07-30 09:00 | 2013-08-02 09:00 | 30 |  |  | -0.88d | 0d | as late as possible | UI Programmer | 24h |  | 346.15 |  |
| 33 | 1.3.1.4.2 | Create Party Member Postitions | 1d | 2013-08-02 09:00 | 2013-08-05 09:00 | 32 |  |  | -0.88d | 0d | as late as possible | UI Programmer | 8h |  | 115.38 |  |
| 34 | 1.3.1.4.3 | Create Status Bar | 1d | 2013-08-05 09:00 | 2013-08-06 09:00 | 33 |  |  | -0.88d | 0d | as late as possible | UI Programmer | 8h |  | 115.38 |  |
| 35 | 1.3.1.4.4 | Create Battle Menu | 2d | 2013-08-06 09:00 | 2013-08-08 09:00 | 34 |  |  | -0.88d | 0d | as late as possible | UI Programmer | 16h |  | 230.77 |  |
| 36 | 1.4 | **Classes** | 25d | 2013-07-05 08:00 A | 2013-08-08 17:00 |  | 44% | 14d | 0d |  | as late as possible |  | 672h | 264h | 9,692.31 | 3,807.69 |
| 37 | 1.4.1 | **Create Warrior** | 15d | 2013-07-05 08:00 A | 2013-07-25 17:00 |  | 73% | 4d | 0d |  | as late as possible |  | 384h | 264h | 5,538.46 | 3,807.69 |
| 38 | 1.4.1.1 | Create Skills | 6d | 2013-07-05 08:00 A | 2013-07-12 17:00 A | 5, 4 | 100% |  |  |  | as late as possible | Lead Programmer; Programmer 1; programmer 3 | 144h | 144h | 2,076.92 | 2,076.92 |
| 39 | 1.4.1.2 | Create Attributes | 6d | 2013-07-15 08:00 A | 2013-07-22 17:00 | 38 | 83% | 1d | 0d |  | as late as possible | Lead Programmer; Programmer 1; programmer 3 | 144h | 120h | 2,076.92 | 1,730.77 |
| 40 | 1.4.1.3 | Create Sprite | 3d | 2013-07-23 08:00 | 2013-07-25 17:00 | 39 |  |  | 0d |  | as late as possible | Lead Programmer; Programmer 1; programmer 3; Artist | 96h |  | 1,384.62 |  |
| 41 | 1.4.2 | **Create Ranger** | 5d | 2013-07-26 08:00 | 2013-08-01 17:00 |  |  |  | 0d |  | as late as possible |  | 144h |  | 2,076.92 |  |
| 42 | 1.4.2.1 | Create Skills | 1d | 2013-07-26 08:00 | 2013-07-26 17:00 | 40 |  |  | 0d |  | as late as possible | Lead Programmer; Programmer 1; programmer 3 | 24h |  | 346.15 |  |
| 43 | 1.4.2.2 | Create Attributes | 1d | 2013-07-29 08:00 | 2013-07-29 17:00 | 42 |  |  | 0d |  | as late as possible | Lead Programmer; Programmer 1; programmer 3 | 24h |  | 346.15 |  |
| 44 | 1.4.2.3 | Create Sprite | 3d | 2013-07-30 08:00 | 2013-08-01 17:00 | 43 |  |  | 0d |  | as late as possible | Lead Programmer; Programmer 1; programmer 3; Artist | 96h |  | 1,384.62 |  |
| 45 | 1.4.3 | **Create Cleric** | 5d | 2013-08-02 08:00 | 2013-08-08 17:00 |  |  |  | 0d |  | as late as possible |  | 144h |  | 2,076.92 |  |
| 46 | 1.4.3.1 | Create Skills | 1d | 2013-08-02 08:00 | 2013-08-02 17:00 | 44 |  |  | 0d |  | as late as possible | Lead Programmer; Programmer 1; programmer 3 | 24h |  | 346.15 |  |
| 47 | 1.4.3.2 | Create Attributes | 1d | 2013-08-05 08:00 | 2013-08-05 17:00 | 46 |  |  | 0d |  | as late as possible | Lead Programmer; Programmer 1; programmer 3 | 24h |  | 346.15 |  |
| 48 | 1.4.3.3 | Create Sprite | 3d | 2013-08-06 08:00 | 2013-08-08 17:00 | 47 |  |  | 0d |  | as late as possible | Lead Programmer; Programmer 1; programmer 3; Artist | 96h |  | 1,384.62 |  |
| 49 | 1.5 | **Create Zones** | 29d | 2013-07-01 08:00 | 2013-08-08 17:00 |  |  |  | 0d |  | as late as possible |  | 464h |  | 6,692.31 |  |
| 50 | 1.5.1 | Create Terrain Tiles | 10d | 2013-07-01 08:00 | 2013-07-12 17:00 | 5, 4 |  |  | 0d |  | as late as possible | Programmer 2; programmer 4 | 160h |  | 2,307.69 |  |
| 51 | 1.5.2 | Create World Map | 2d | 2013-07-15 08:00 | 2013-07-16 17:00 | 50 |  |  | 0d |  | as late as possible | Programmer 2; programmer 4 | 32h |  | 461.54 |  |
| 52 | 1.5.3 | Create Spawing Enemies | 3d | 2013-07-17 08:00 | 2013-07-19 17:00 | 51 |  |  | 0d |  | as late as possible | Programmer 2; programmer 4 | 48h |  | 692.31 |  |
| 53 | 1.5.4 | Create Interactable Store | 1d | 2013-07-22 08:00 | 2013-07-22 17:00 | 52 |  |  | 0d |  | as late as possible | Programmer 2; programmer 4 | 16h |  | 230.77 |  |
| 54 | 1.5.5 | Create Interactable Inn | 1d | 2013-07-23 08:00 | 2013-07-23 17:00 | 53 |  |  | 0d |  | as late as possible | Programmer 2; programmer 4 | 16h |  | 230.77 |  |
| 55 | 1.5.6 | Create NPC's | 5d | 2013-07-24 08:00 | 2013-07-30 17:00 | 54 |  |  | 0d |  | as late as possible | Programmer 2; programmer 4 | 80h |  | 1,153.85 |  |
| 56 | 1.5.7 | Create Quests | 3d | 2013-07-31 08:00 | 2013-08-02 17:00 | 55 |  |  | 0d |  | as late as possible | Programmer 2; programmer 4 | 48h |  | 692.31 |  |
| 57 | 1.5.8 | Create Bosses | 4d | 2013-08-05 08:00 | 2013-08-08 17:00 | 56 |  |  | 0d |  | as late as possible | Programmer 2; programmer 4 | 64h |  | 923.08 |  |

| ID | WBS | Task | Duration | Start | Finish | Predecessors | Complete | Remaining | Total slack | Free slack | Constraint | Resources | Work | Cost |
| --- | --- | --- | --- | --- | --- | --- | --- | --- | --- | --- | --- | --- | --- | --- |
| 58 | 1.6 | **Battle System** | 40d | 2013-08-09 08:00 | 2013-10-03 17:00 |  |  |  | 0d |  | as late as possible |  | 1920h | 27,692.31 |
| 59 | 1.6.1 | Create Turn Rotation | 5d | 2013-08-09 08:00 | 2013-08-15 17:00 | 6, 36, 49 |  |  | 0d |  | as late as possible | Lead Programmer; Programmer 1; Programmer 2; programmer 3; programmer 4; UI Programmer | 240h | 3,461.54 |
| 60 | 1.6.2 | Create Damage System | 5d | 2013-08-16 08:00 | 2013-08-22 17:00 | 59 |  |  | 0d |  | as late as possible | Lead Programmer; Programmer 1; Programmer 2; programmer 3; programmer 4; UI Programmer | 240h | 3,461.54 |
| 61 | 1.6.3 | Create Battle Effects | 10d | 2013-08-23 08:00 | 2013-09-05 17:00 | 60 |  |  | 0d |  | as late as possible | Lead Programmer; Programmer 1; Programmer 2; programmer 3; programmer 4; UI Programmer | 480h | 6,923.08 |
| 62 | 1.6.4 | Create Loot System | 10d | 2013-09-06 08:00 | 2013-09-19 17:00 | 61 |  |  | 0d |  | as late as possible | Lead Programmer; Programmer 1; Programmer 2; programmer 3; programmer 4; UI Programmer | 480h | 6,923.08 |
| 63 | 1.6.5 | Create Experience System | 10d | 2013-09-20 08:00 | 2013-10-03 17:00 | 62 |  |  | 0d |  | as late as possible | Lead Programmer; Programmer 1; Programmer 2; programmer 3; programmer 4; UI Programmer | 480h | 6,923.08 |
| 64 | 1.7 | Integration Testing/Polishing | 16d | 2013-10-04 08:00 | 2013-10-25 17:00 | 63 |  |  | 0d |  | as late as possible | Lead Programmer; Programmer 1; Programmer 2; programmer 3; programmer 4; UI Programmer | 768h | 11,076.92 |
| 65 | 1.8 | **Team Meetings** | 79.38d | 2013-07-08 08:00 A | 2013-10-25 11:00 |  | 13% | 69.45d | 70d | 0d | as late as possible |  |  |  |
| 66 | 1.8.1 | Team Meetings 1 | 3h | 2013-07-08 08:00 A | 2013-07-08 11:00 A |  | 100% |  |  |  | start no later than 2013-07-08 08:00 |  |  |  |
| 67 | 1.8.2 | Team Meetings 2 | 3h | 2013-07-12 08:00 A | 2013-07-12 11:00 A |  | 100% |  |  |  | start no later than 2013-07-12 08:00 |  |  |  |
| 68 | 1.8.3 | Team Meetings 3 | 3h | 2013-07-15 08:00 A | 2013-07-15 11:00 A |  | 100% |  |  |  | start no later than 2013-07-15 08:00 |  |  |  |
| 69 | 1.8.4 | Team Meetings 4 | 3h | 2013-07-19 08:00 A | 2013-07-19 11:00 A |  | 100% |  |  |  | start no later than 2013-07-19 08:00 |  |  |  |
| 70 | 1.8.5 | Team Meetings 5 | 3h | 2013-07-22 08:00 | 2013-07-22 11:00 |  |  |  | 50d | 0d | start no later than 2013-07-22 08:00 |  |  |  |
| 71 | 1.8.6 | Team Meetings 6 | 3h | 2013-07-26 08:00 | 2013-07-26 11:00 |  |  |  | 54d | 0d | start no later than 2013-07-26 08:00 |  |  |  |
| 72 | 1.8.7 | Team Meetings 7 | 3h | 2013-07-29 08:00 | 2013-07-29 11:00 |  |  |  | 55d | 0d | start no later than 2013-07-29 08:00 |  |  |  |
| 73 | 1.8.8 | Team Meetings 8 | 3h | 2013-08-02 08:00 | 2013-08-02 11:00 |  |  |  | 59d | 0d | start no later than 2013-08-02 08:00 |  |  |  |
| 74 | 1.8.9 | Team Meetings 9 | 3h | 2013-08-05 08:00 | 2013-08-05 11:00 |  |  |  | 60d | 0d | start no later than 2013-08-05 08:00 |  |  |  |
| 75 | 1.8.10 | Team Meetings 10 | 3h | 2013-08-09 08:00 | 2013-08-09 11:00 |  |  |  | 64d | 0d | start no later than 2013-08-09 08:00 |  |  |  |
| 76 | 1.8.11 | Team Meetings 11 | 3h | 2013-08-12 08:00 | 2013-08-12 11:00 |  |  |  | 65d | 0d | start no later than 2013-08-12 08:00 |  |  |  |
| 77 | 1.8.12 | Team Meetings 12 | 3h | 2013-08-16 08:00 | 2013-08-16 11:00 |  |  |  | 69d | 0d | start no later than 2013-08-16 08:00 |  |  |  |
| 78 | 1.8.13 | Team Meetings 13 | 3h | 2013-08-19 08:00 | 2013-08-19 11:00 |  |  |  | 70d | 0d | start no later than 2013-08-19 08:00 |  |  |  |
| 79 | 1.8.14 | Team Meetings 14 | 3h | 2013-08-23 08:00 | 2013-08-23 11:00 |  |  |  | 74d | 0d | start no later than 2013-08-23 08:00 |  |  |  |
| 80 | 1.8.15 | Team Meetings 15 | 3h | 2013-08-26 08:00 | 2013-08-26 11:00 |  |  |  | 75d | 0d | start no later than 2013-08-26 08:00 |  |  |  |
| 81 | 1.8.16 | Team Meetings 16 | 3h | 2013-08-30 08:00 | 2013-08-30 11:00 |  |  |  | 79d | 0d | start no later than 2013-08-30 08:00 |  |  |  |
| 82 | 1.8.17 | Team Meetings 17 | 3h | 2013-09-02 08:00 | 2013-09-02 11:00 |  |  |  | 80d | 0d | start no later than 2013-09-02 08:00 |  |  |  |
| 83 | 1.8.18 | Team Meetings 18 | 3h | 2013-09-06 08:00 | 2013-09-06 11:00 |  |  |  | 84d | 0d | start no later than 2013-09-06 08:00 |  |  |  |
| 84 | 1.8.19 | Team Meetings 19 | 3h | 2013-09-09 08:00 | 2013-09-09 11:00 |  |  |  | 85d | 0d | start no later than 2013-09-09 08:00 |  |  |  |
| 85 | 1.8.20 | Team Meetings 20 | 3h | 2013-09-13 08:00 | 2013-09-13 11:00 |  |  |  | 89d | 0d | start no later than 2013-09-13 08:00 |  |  |  |
| 86 | 1.8.21 | Team Meetings 21 | 3h | 2013-09-16 08:00 | 2013-09-16 11:00 |  |  |  | 90d | 0d | start no later than 2013-09-16 08:00 |  |  |  |
| 87 | 1.8.22 | Team Meetings 22 | 3h | 2013-09-20 08:00 | 2013-09-20 11:00 |  |  |  | 94d | 0d | start no later than 2013-09-20 08:00 |  |  |  |
| 88 | 1.8.23 | Team Meetings 23 | 3h | 2013-09-23 08:00 | 2013-09-23 11:00 |  |  |  | 95d | 0d | start no later than 2013-09-23 08:00 |  |  |  |
| 89 | 1.8.24 | Team Meetings 24 | 3h | 2013-09-27 08:00 | 2013-09-27 11:00 |  |  |  | 99d | 0d | start no later than 2013-09-27 08:00 |  |  |  |
| 90 | 1.8.25 | Team Meetings 25 | 3h | 2013-09-30 08:00 | 2013-09-30 11:00 |  |  |  | 100d | 0d | start no later than 2013-09-30 08:00 |  |  |  |
| 91 | 1.8.26 | Team Meetings 26 | 3h | 2013-10-04 08:00 | 2013-10-04 11:00 |  |  |  | 104d | 0d | start no later than 2013-10-04 08:00 |  |  |  |
| 92 | 1.8.27 | Team Meetings 27 | 3h | 2013-10-07 08:00 | 2013-10-07 11:00 |  |  |  | 105d | 0d | start no later than 2013-10-07 08:00 |  |  |  |
| 93 | 1.8.28 | Team Meetings 28 | 3h | 2013-10-11 08:00 | 2013-10-11 11:00 |  |  |  | 109d | 0d | start no later than 2013-10-11 08:00 |  |  |  |
| 94 | 1.8.29 | Team Meetings 29 | 3h | 2013-10-14 08:00 | 2013-10-14 11:00 |  |  |  | 110d | 0d | start no later than 2013-10-14 08:00 |  |  |  |
| 95 | 1.8.30 | Team Meetings 30 | 3h | 2013-10-18 08:00 | 2013-10-18 11:00 |  |  |  | 114d | 0d | start no later than 2013-10-18 08:00 |  |  |  |
| 96 | 1.8.31 | Team Meetings 31 | 3h | 2013-10-21 08:00 | 2013-10-21 11:00 |  |  |  | 115d | 0d | start no later than 2013-10-21 08:00 |  |  |  |
| 97 | 1.8.32 | Team Meetings 32 | 3h | 2013-10-25 08:00 | 2013-10-25 11:00 |  |  |  | 119d | 0d | start no later than 2013-10-25 08:00 |  |  |  |
